How a schedule from a web Gantt chart changed from version to version. A marks actual dates.

## Version 1 (saved 2024-06-03)

| ID | WBS | Task | Duration | Start | Finish | Predecessors | Complete |
| --- | --- | --- | --- | --- | --- | --- | --- |
| 2 | 1 | **Dependent Tasks of Functional Team** | 1d | 2022-07-12 | 2022-07-12 |  |  |
| 3 |  | (AA) Table Design Done | 1d | 2022-07-12 | 2022-07-12 |  |  |
| 4 |  | (AD) Code/Configuration Tables Done | 1d | 2022-07-12 | 2022-07-12 |  |  |
| 5 |  | (BA) Product Setup Done | 1d | 2022-07-12 | 2022-07-12 |  |  |
| 6 |  | (BA) Product Mappping Done | 1d | 2022-07-12 | 2022-07-12 |  |  |
| 7 |  | (eBao ST) Functional Test Done | 1d | 2022-07-12 | 2022-07-12 |  |  |
| 8 |  | (User) Functional UAT Done | 1d | 2022-07-12 | 2022-07-12 |  |  |
| 9 | 2 | **Data Migration** | 292d | 2022-07-18 | 2023-08-29 |  | 3% |
| 10 | 2.1 | **DC Requirement Phase** | 20d | 2022-07-18 | 2022-08-12 |  | 75% |
| 11 |  | DC Approach/Scope/Plan | 5d | 2022-07-18 | 2022-07-22 |  | 100% |
| 12 |  | Baseline Template Introduction | 10d | 2022-07-25 | 2022-08-05 | 11 | 100% |
| 13 |  | DC Solution Doc | 4d | 2022-08-08 | 2022-08-11 | 12 |  |
| 14 |  | DC Approach and Scope Sign-Off | 1d | 2022-08-12 | 2022-08-12 | 13 |  |
| 15 | 2.2 | **DC Design Phase** | 40d | 2022-08-15 | 2022-10-07 |  |  |
| 16 |  | Design - Template & Mapping | 25d | 2022-08-15 | 2022-09-16 | 14, 3 |  |
| 17 |  | Design - Validation Rule & Reconciliation | 15d | 2022-09-19 | 2022-10-07 | 16 |  |
| 18 | 2.3 | **(Client IT & eBao DC) Staging Data Delivery and Validation** | 100d | 2022-08-08 | 2022-12-23 |  |  |
| 19 |  | First Time Delivery of All Staging Tables | 40d | 2022-08-08 | 2022-09-30 | 12 |  |
| 20 |  | Pass Rate of Staging Data > 60% | 20d | 2022-10-03 | 2022-10-28 | 19 |  |
| 21 |  | Pass Rate of Staging Data > 90% | 20d | 2022-10-31 | 2022-11-25 | 20 |  |
| 22 |  | Pass Rate of Staging Data = 100% | 20d | 2022-11-28 | 2022-12-23 | 21 |  |
| 23 | 2.4 | **DC Development Phase** | 65d | 2022-10-10 | 2023-01-06 |  |  |
| 24 |  | DC Development - Coversion Script | 30d | 2022-10-10 | 2022-11-18 | 17 |  |
| 25 |  | DC Development - Validation Rules | 10d | 2022-11-21 | 2022-12-02 | 24 |  |
| 26 |  | DC Development - Reconciliation | 10d | 2022-12-05 | 2022-12-16 | 25 |  |
| 27 |  | DC Development - Trial Run with Real Data | 35d | 2022-11-21 | 2023-01-06 | 24 |  |
| 28 | 2.5 | **DC Test - Internal** | 90d | 2022-12-05 | 2023-04-07 |  |  |
| 29 |  | Target Data Validation | 30d | 2022-12-05 | 2023-01-13 | 25 |  |
| 30 |  | Target Data Reconciliation | 30d | 2023-01-16 | 2023-02-24 | 29 |  |
| 31 |  | Recalculation Verification | 40d | 2022-12-05 | 2023-01-27 | 25 |  |
| 32 |  | Batch Jobs Running on Migrated Data | 20d | 2023-01-30 | 2023-02-24 | 31 |  |
| 33 | 2.5.5 | **Functional Test with Migrated Data** | 60d | 2023-01-16 | 2023-04-07 |  |  |
| 34 |  | Functional Test with Migrated Data (Pass Rate > 70%) | 30d | 2023-01-16 | 2023-02-24 | 29 |  |
| 35 |  | Functional Test with Migrated Data (Pass Rate > 85%) | 15d | 2023-02-27 | 2023-03-17 | 34 |  |
| 36 |  | Functional Test with Migrated Data (Pass Rate > 95%) | 15d | 2023-03-20 | 2023-04-07 | 35 |  |
| 37 | 2.6 | **DC Test - External (by Client)** | 90d | 2023-02-27 | 2023-06-30 |  |  |
| 38 |  | (Client BA) Comparison Check on UI | 30d | 2023-02-27 | 2023-04-07 | 34 |  |
| 39 |  | (Client BA/IT) Pre DC UAT | 30d | 2023-02-27 | 2023-04-07 | 34 |  |
| 40 |  | (Client User) DC UAT | 60d | 2023-04-10 | 2023-06-30 | 36, 39 |  |
| 41 | 2.7 | **Go Live** | 14d | 2023-06-29 | 2023-07-18 |  |  |
| 42 |  | Rehearsal for CutOver | 12d | 2023-06-29 | 2023-07-14 | 40FS-2d |  |
| 43 |  | CutOver | 2d | 2023-07-17 | 2023-07-18 | 42 |  |
| 44 |  | Post-Go-Live Support | 30d | 2023-07-19 | 2023-08-29 | 43 |  |

## Version 2 (saved 2024-06-03)

Last finish 2023-08-29 → 2025-10-01 (+764d). Complete tasks 2 → 0.

Added:

| ID | Task | Duration | Start | Finish | Predecessors |
| --- | --- | --- | --- | --- | --- |
| 2 | **Tasks Dependent on Function Team** | 414d | 2022-07-12 | 2024-02-09 |  |
| 3 | (User&eBao BA) BSD Signoff | 1d | 2024-01-01 | 2024-01-01 |  |
| 4 | (eBao AA) Table Design of Customization | 30d | 2024-01-01 | 2024-02-09 |  |
| 5 | (eBao BA&AD) Code/Master Table Configuration | 1d | 2022-07-12 | 2022-07-12 |  |
| 6 | (User&eBao BA) Product Set-up | 1d | 2022-07-12 | 2022-07-12 |  |
| 7 | (User&eBao BA) Product Mappping | 1d | 2022-07-12 | 2022-07-12 |  |
| 8 | (eBao Tester) Function Test | 1d | 2022-07-12 | 2022-07-12 |  |
| 9 | (User) Function UAT | 1d | 2022-07-12 | 2022-07-12 |  |
| 11 | **Requirement Phase** | 11d | 2024-09-02 | 2024-09-16 |  |
| 13 | DC Solution | 4d | 2024-09-10 | 2024-09-13 | 16 |
| 15 | **Design Phase** | 46d | 2024-09-09 | 2024-11-11 |  |
| 17 | Policy - policy/benefit master | 1d | 2024-09-09 | 2024-09-09 |  |
| 18 | Party | 1d | 2024-09-09 | 2024-09-09 |  |
| 19 | Policy - policy roles | 1d | 2024-09-09 | 2024-09-09 |  |
| 20 | Policy - others | 1d | 2024-09-09 | 2024-09-09 |  |
| 21 | ILP | 1d | 2024-09-09 | 2024-09-09 |  |
| 22 | Policy Account | 1d | 2024-09-09 | 2024-09-09 |  |
| 30 | **Development Phase** | 65d | 2024-11-12 | 2025-02-10 |  |
| 35 | **DM Test at eBao Side** | 90d | 2025-01-07 | 2025-05-12 |  |
| 40 | **Function Test on Migrated Data (DVT)** | 60d | 2025-02-18 | 2025-05-12 |  |
| 41 | Function Test (Pass Rate > 70%) | 30d | 2025-02-18 | 2025-03-31 | 36 |
| 44 | **DM Test at Client Side** | 90d | 2025-04-01 | 2025-08-04 |  |

Removed: 2 Dependent Tasks of Functional Team; 3 (AA) Table Design Done; 4 (AD) Code/Configuration Tables Done; 5 (BA) Product Setup Done; 6 (BA) Product Mappping Done; 7 (eBao ST) Functional Test Done; 8 (User) Functional UAT Done; 10 DC Requirement Phase; 13 DC Solution Doc; 15 DC Design Phase; 23 DC Development Phase; 28 DC Test - Internal; 33 Functional Test with Migrated Data; 34 Functional Test with Migrated Data (Pass Rate > 70%); 37 DC Test - External (by Client)

Changed:

| ID | Task | Start | Finish | Duration | Complete | Predecessors |
| --- | --- | --- | --- | --- | --- | --- |
| 10 | **Data Migration** | 2022-07-18 → 2024-09-02 (+777d) | 2023-08-29 → 2025-10-01 (+764d) | 292d → 283d | 3% → 0% |  |
| 12 | DC Approach/Scope/Plan | 2022-07-18 → 2024-09-02 (+777d) | 2022-07-22 → 2024-09-06 (+777d) |  | 100% → 0% |  |
| 14 | DC Approach and Scope Sign-Off | 2022-08-12 → 2024-09-16 (+766d) | 2022-08-12 → 2024-09-16 (+766d) |  |  | DC Solution Doc → 13 |
| 16 | **Baseline Template Introduction** | 2022-07-25 → 2024-09-09 (+777d) | 2022-08-05 → 2024-09-09 (+766d) | 10d → 1d | 100% → 0% |  |
| 23 | Design - Template & Mapping | 2022-08-15 → 2024-09-17 (+764d) | 2022-09-16 → 2024-10-21 (+766d) |  |  | 14, (AA) Table Design Done → 14, 4 |
| 24 | Design - Validation Rule & Reconciliation | 2022-09-19 → 2024-10-22 (+764d) | 2022-10-07 → 2024-11-11 (+766d) |  |  |  |
| 25 | **(Client IT & eBao DC) Staging Data Delivery and Validation** | 2022-08-08 → 2024-09-10 (+764d) | 2022-12-23 → 2025-01-27 (+766d) |  |  |  |
| 26 | First Time Delivery of All Staging Tables | 2022-08-08 → 2024-09-10 (+764d) | 2022-09-30 → 2024-11-04 (+766d) |  |  |  |
| 27 | Pass Rate of Staging Data > 60% | 2022-10-03 → 2024-11-05 (+764d) | 2022-10-28 → 2024-12-02 (+766d) |  |  |  |
| 28 | Pass Rate of Staging Data > 90% | 2022-10-31 → 2024-12-03 (+764d) | 2022-11-25 → 2024-12-30 (+766d) |  |  |  |
| 29 | Pass Rate of Staging Data = 100% | 2022-11-28 → 2024-12-31 (+764d) | 2022-12-23 → 2025-01-27 (+766d) |  |  |  |
| 31 | DC Development - Coversion Script | 2022-10-10 → 2024-11-12 (+764d) | 2022-11-18 → 2024-12-23 (+766d) |  |  |  |
| 32 | DC Development - Validation Rules | 2022-11-21 → 2024-12-24 (+764d) | 2022-12-02 → 2025-01-06 (+766d) |  |  |  |
| 33 | DC Development - Reconciliation | 2022-12-05 → 2025-01-07 (+764d) | 2022-12-16 → 2025-01-20 (+766d) |  |  |  |
| 34 | DC Development - Trial Run with Real Data | 2022-11-21 → 2024-12-24 (+764d) | 2023-01-06 → 2025-02-10 (+766d) |  |  |  |
| 36 | Target Data Validation | 2022-12-05 → 2025-01-07 (+764d) | 2023-01-13 → 2025-02-17 (+766d) |  |  |  |
| 37 | Target Data Reconciliation | 2023-01-16 → 2025-02-18 (+764d) | 2023-02-24 → 2025-03-31 (+766d) |  |  |  |
| 38 | Recalculation Verification | 2022-12-05 → 2025-01-07 (+764d) | 2023-01-27 → 2025-03-03 (+766d) |  |  |  |
| 39 | Batch Jobs Running on Migrated Data | 2023-01-30 → 2025-03-04 (+764d) | 2023-02-24 → 2025-03-31 (+766d) |  |  |  |
| 42 | Functional Test with Migrated Data (Pass Rate > 85%) | 2023-02-27 → 2025-04-01 (+764d) | 2023-03-17 → 2025-04-21 (+766d) |  |  | Functional Test with Migrated Data (Pass Rate > 70%) → 41 |
| 43 | Functional Test with Migrated Data (Pass Rate > 95%) | 2023-03-20 → 2025-04-22 (+764d) | 2023-04-07 → 2025-05-12 (+766d) |  |  |  |
| 45 | (Client BA) Comparison Check on UI | 2023-02-27 → 2025-04-01 (+764d) | 2023-04-07 → 2025-05-12 (+766d) |  |  | Functional Test with Migrated Data (Pass Rate > 70%) → 41 |
| 46 | (Client BA/IT) Pre DC UAT | 2023-02-27 → 2025-04-01 (+764d) | 2023-04-07 → 2025-05-12 (+766d) |  |  | Functional Test with Migrated Data (Pass Rate > 70%) → 41 |
| 47 | (Client User) DC UAT | 2023-04-10 → 2025-05-13 (+764d) | 2023-06-30 → 2025-08-04 (+766d) |  |  |  |
| 48 | **Go Live** | 2023-06-29 → 2025-08-01 (+764d) | 2023-07-18 → 2025-08-20 (+764d) |  |  |  |
| 49 | Rehearsal for CutOver | 2023-06-29 → 2025-08-01 (+764d) | 2023-07-14 → 2025-08-18 (+766d) |  |  |  |
| 50 | CutOver | 2023-07-17 → 2025-08-19 (+764d) | 2023-07-18 → 2025-08-20 (+764d) |  |  |  |
| 51 | Post-Go-Live Support | 2023-07-19 → 2025-08-21 (+764d) | 2023-08-29 → 2025-10-01 (+764d) |  |  |  |

## Version 3 (saved 2024-06-04)

Last finish 2025-10-01 → 2027-08-24 (+692d).

Added:

| ID | Task | Duration | Start | Finish | Predecessors |
| --- | --- | --- | --- | --- | --- |
| 8 | (eBao Tester) Function Test's Pass Rate > 80% | 1d | 2026-10-30 | 2026-10-30 |  |
| 9 | (User) Function UAT Done | 1d | 2027-02-26 | 2027-02-26 |  |
| 11 | **Activity on Baseline Template (clear all DVR and BVR-NonProd issues)** | 350d | 2024-08-01 | 2025-12-03 |  |
| 12 | CHUBB-1 CAPSIL | 140d | 2024-08-01 | 2025-02-12 |  |
| 13 | System-6 | 70d | 2025-02-13 | 2025-05-21 | 12 |
| 14 | CAPSIL | 70d | 2025-05-22 | 2025-08-27 | 13 |
| 15 | IPAS | 70d | 2025-08-28 | 2025-12-03 | 14 |
| 17 | DM Approach | 1d | 2026-01-01 | 2026-01-01 |  |
| 18 | **Data Migration Scope** | 13d | 2026-01-02 | 2026-01-20 |  |
| 19 | Initial Discussion & Draft Version | 2d | 2026-01-02 | 2026-01-05 | 17 |
| 20 | High-level Solution for Out-of-Scope Items | 10d | 2026-01-06 | 2026-01-19 | 19 |
| 21 | Scope Sign-off | 1d | 2026-01-20 | 2026-01-20 | 20 |
| 22 | DM Plan | 1d | 2026-01-21 | 2026-01-21 | 21 |
| 23 | **Design Phase / Baseline** | 29d | 2024-08-01 | 2024-09-10 |  |
| 24 | **Baseline Template & BVR Introduction and Initial Mapping** | 29d | 2024-08-01 | 2024-09-10 |  |
| 31 | **Design Phase / Customization** | 40d | 2026-03-27 | 2026-05-21 |  |
| 32 | Template Change | 20d | 2026-03-27 | 2026-04-23 | 4 |
| 33 | BVR Enhancement | 20d | 2026-04-24 | 2026-05-21 | 32 |
| 34 | **(Client IT) Template Data Delivery and Verification** | 175d | 2026-05-01 | 2026-12-31 |  |
| 35 | Delivery of All Customized Templates | 1d | 2026-05-01 | 2026-05-01 | 32FS+5d |
| 36 | **BVR - Non Product** | 80d | 2026-05-25 | 2026-09-11 |  |
| 37 | Pass Rate of All Customized Templates > 60% | 20d | 2026-05-25 | 2026-06-19 | 35FS+15d |
| 38 | Pass Rate of All Customized Templates > 90% | 30d | 2026-06-22 | 2026-07-31 | 37 |
| 39 | Pass Rate of All Customized Templates > 98% | 30d | 2026-08-03 | 2026-09-11 | 38 |
| 40 | **BVR - Product** | 130d | 2026-07-03 | 2026-12-31 |  |
| 41 | Pass Rate of All Customized Templates > 60% | 30d | 2026-07-03 | 2026-08-13 | 6 |
| 42 | Pass Rate of All Customized Templates > 75% | 25d | 2026-08-14 | 2026-09-17 | 41 |
| 43 | Pass Rate of All Customized Templates > 90% | 25d | 2026-09-18 | 2026-10-22 | 42 |
| 44 | Pass Rate of All Customized Templates > 98% | 50d | 2026-10-23 | 2026-12-31 | 43 |
| 45 | **Development Phase / Customization** | 80d | 2026-04-24 | 2026-08-13 |  |
| 46 | Migration Script | 30d | 2026-04-24 | 2026-06-04 | 32 |
| 47 | BVR Rules | 20d | 2026-06-05 | 2026-07-02 | 46 |
| 48 | **Reconciliation Report** | 30d | 2026-07-03 | 2026-08-13 |  |
| 49 | Collect Re-con Requirement | 10d | 2026-07-03 | 2026-07-16 | 47 |
| 50 | Development of Re-con Report | 20d | 2026-07-17 | 2026-08-13 | 49 |
| 56 | Pass Rate > 75% | 25d | 2026-09-18 | 2026-10-22 | 42 |
| 57 | Pass Rate > 90% | 25d | 2026-10-23 | 2026-11-26 | 56 |
| 58 | Pass Rate > 98% | 20d | 2026-11-27 | 2026-12-24 | 57 |

Removed: 8 (eBao Tester) Function Test; 9 (User) Function UAT; 12 DC Approach/Scope/Plan; 13 DC Solution; 14 DC Approach and Scope Sign-Off; 15 Design Phase; 16 Baseline Template Introduction; 23 Design - Template & Mapping; 24 Design - Validation Rule & Reconciliation; 25 (Client IT & eBao DC) Staging Data Delivery and Validation; 26 First Time Delivery of All Staging Tables; 27 Pass Rate of Staging Data > 60%; 28 Pass Rate of Staging Data > 90%; 29 Pass Rate of Staging Data = 100%; 30 Development Phase; 31 DC Development - Coversion Script; 32 DC Development - Validation Rules; 33 DC Development - Reconciliation

Changed:

| ID | Task | Start | Finish | Duration | Complete | Predecessors |
| --- | --- | --- | --- | --- | --- | --- |
| 2 | **Tasks Dependent on Function Team** | 2022-07-12 → 2026-01-01 (+1269d) | 2024-02-09 → 2027-02-26 (+1113d) | 414d → 302d | 2% → 0% |  |
| 3 | (User&eBao BA) BSD Signoff | 2024-01-01 → 2026-01-01 (+731d) | 2024-01-01 → 2026-02-11 (+772d) | 1d → 30d |  |  |
| 4 | (eBao AA) Table Design of Customization | 2024-01-01 → 2026-03-26 (+815d) | 2024-02-09 → 2026-03-26 (+776d) | 30d → 1d | 3% → 0% | none → 3FS+30d |
| 5 | (eBao BA&AD) Code/Master Table Configuration | 2022-07-12 → 2026-04-23 (+1381d) | 2022-07-12 → 2026-04-23 (+1381d) |  |  | none → 3FS+50d |
| 6 | (User&eBao BA) Product Set-up | 2022-07-12 → 2026-07-02 (+1451d) | 2022-07-12 → 2026-07-02 (+1451d) |  |  | none → 3FS+100d |
| 7 | (User&eBao BA) Product Mappping | 2022-07-12 → 2026-05-21 (+1409d) | 2022-07-12 → 2026-05-21 (+1409d) |  |  | none → 3FS+70d |
| 10 | **Data Migration** | 2024-09-02 → 2024-08-01 (-32d) | 2025-10-01 → 2027-08-24 (+692d) | 283d → 799d |  |  |
| 16 | **Requirement Phase** | 2024-09-02 → 2026-01-01 (+486d) | 2024-09-16 → 2026-01-21 (+492d) | 11d → 15d |  |  |
| 25 | Policy - policy/benefit master | 2024-09-09 → 2024-08-01 (-39d) | 2024-09-09 → 2024-08-14 (-26d) | 1d → 10d |  | none → 12FS-140d |
| 26 | Party | 2024-09-09 → 2024-08-15 (-25d) | 2024-09-09 → 2024-08-19 (-21d) | 1d → 3d |  | none → 25 |
| 27 | Policy - policy roles | 2024-09-09 → 2024-08-20 (-20d) | 2024-09-09 → 2024-08-22 (-18d) | 1d → 3d |  | none → 26 |
| 28 | Policy - others | 2024-09-09 → 2024-08-23 (-17d) | 2024-09-09 → 2024-08-27 (-13d) | 1d → 3d |  | none → 27 |
| 29 | ILP | 2024-09-09 → 2024-08-28 (-12d) | 2024-09-09 → 2024-09-03 (-6d) | 1d → 5d |  | none → 28 |
| 30 | Policy Account | 2024-09-09 → 2024-09-04 (-5d) | 2024-09-09 → 2024-09-10 (+1d) | 1d → 5d |  | none → 29 |
| 51 | DC Development - Trial Run with Real Data | 2024-12-24 → 2026-06-05 (+528d) | 2025-02-10 → 2026-07-02 (+507d) | 35d → 20d |  | DC Development - Coversion Script → 46 |
| 52 | **DM Test at eBao Side** | 2025-01-07 → 2026-07-03 (+542d) | 2025-05-12 → 2027-02-05 (+634d) | 90d → 156d |  |  |
| 53 | Target Data Validation | 2025-01-07 → 2026-07-03 (+542d) | 2025-02-17 → 2026-08-13 (+542d) |  |  | DC Development - Validation Rules → 47 |
| 54 | Target Data Reconciliation | 2025-02-18 → 2026-08-14 (+542d) | 2025-03-31 → 2026-09-03 (+521d) | 30d → 15d |  |  |
| 55 | **Recalculation Verification** | 2025-01-07 → 2026-09-18 (+619d) | 2025-03-03 → 2026-12-24 (+661d) | 40d → 70d |  | DC Development - Validation Rules → none |
| 59 | Batch Jobs Running on Migrated Data | 2025-03-04 → 2026-12-25 (+661d) | 2025-03-31 → 2027-02-04 (+675d) | 20d → 30d |  |  |
| 60 | **Function Test on Migrated Data (DVT)** | 2025-02-18 → 2026-11-02 (+622d) | 2025-05-12 → 2027-02-05 (+634d) | 60d → 70d |  |  |
| 61 | Function Test (Pass Rate > 70%) | 2025-02-18 → 2026-11-02 (+622d) | 2025-03-31 → 2026-12-11 (+620d) |  |  | 53 → 56, 8 |
| 62 | Functional Test with Migrated Data (Pass Rate > 85%) | 2025-04-01 → 2026-12-14 (+622d) | 2025-04-21 → 2027-01-08 (+627d) | 15d → 20d |  |  |
| 63 | Functional Test with Migrated Data (Pass Rate > 95%) | 2025-04-22 → 2027-01-11 (+629d) | 2025-05-12 → 2027-02-05 (+634d) | 15d → 20d |  |  |
| 64 | **DM Test at Client Side** | 2025-04-01 → 2026-12-14 (+622d) | 2025-08-04 → 2027-06-11 (+676d) | 90d → 130d |  |  |
| 65 | (Client BA) Comparison Check on UI | 2025-04-01 → 2026-12-14 (+622d) | 2025-05-12 → 2027-01-22 (+620d) |  |  |  |
| 66 | (Client BA/IT) Pre DC UAT | 2025-04-01 → 2027-01-25 (+664d) | 2025-05-12 → 2027-03-19 (+676d) | 30d → 40d |  | 61 → 65 |
| 67 | (Client User) DC UAT | 2025-05-13 → 2027-03-22 (+678d) | 2025-08-04 → 2027-06-11 (+676d) |  |  | 63, 66 → 9, 66 |
| 68 | **Go Live** | 2025-08-01 → 2027-06-14 (+682d) | 2025-08-20 → 2027-06-29 (+678d) | 14d → 12d |  |  |
| 69 | Rehearsal for CutOver | 2025-08-01 → 2027-06-14 (+682d) | 2025-08-18 → 2027-06-25 (+676d) | 12d → 10d |  | 67FS-2d → 67 |
| 70 | CutOver | 2025-08-19 → 2027-06-28 (+678d) | 2025-08-20 → 2027-06-29 (+678d) |  |  |  |
| 71 | Post-Go-Live Support | 2025-08-21 → 2027-06-30 (+678d) | 2025-10-01 → 2027-08-24 (+692d) | 30d → 40d |  |  |
